# Rise Of The Lost Colors

How a schedule from MS Project changed from version to version. A marks actual dates.

## Version 1 (data date 2026-03-24, saved 2026-04-22, file Rise of The Lost Colors - SPRINT 1.mpp)

Note of the change: fix: arreglar costes y inluir cronograma

| ID | WBS | Task | Duration | Start | Finish | Predecessors | Complete | Total float |
| --- | --- | --- | --- | --- | --- | --- | --- | --- |
| 1 | 1 | **Gestión y Planificación** | 77d | 2026-02-02 A | 2026-05-19 |  | 65% | 1d |
| 2 | 1.1 | **Documentación** | 77d | 2026-02-02 A | 2026-05-19 |  | 65% | 1d |
| 3 | 1.1.1 | **GDD** | 8.75d | 2026-02-02 A | 2026-02-12 |  | 86% | 69.25d |
| 4 |  | Redactar Game Design Document | 30h | 2026-02-02 A | 2026-02-11 A |  | 100% |  |
| 5 |  | Revisión y validación final del documento | 5h | 2026-02-11 | 2026-02-12 | 4 |  | 69.25d |
| 6 | 1.1.2 | **Plan de dirección** | 0.75d | 2026-02-12 A | 2026-02-13 A |  | 100% |  |
| 7 |  | Redactar plan de dirección del proyecto | 3h | 2026-02-12 A | 2026-02-13 A | 5 | 100% |  |
| 8 | 1.1.3 | **Requisitos** | 3.5d | 2026-02-13 A | 2026-02-18 A |  | 100% |  |
| 9 |  | Redactar plan de gestión de requisitos | 3h | 2026-02-13 A | 2026-02-16 A | 7 | 100% |  |
| 10 |  | Redacción del registro de requisitos | 6h | 2026-02-16 A | 2026-02-17 A | 9 | 100% |  |
| 11 |  | Elaboración de la matriz de requisitos y seguimiento | 5h | 2026-02-17 A | 2026-02-18 A | 10 | 100% |  |
| 12 | 1.1.4 | **Alcance** | 1.5d | 2026-02-19 A | 2026-02-20 A |  | 100% |  |
| 13 |  | Redactar enunciado del alcance | 3h | 2026-02-19 A | 2026-02-19 A | 11 | 100% |  |
| 14 |  | Redactar plan de gestión del alcance | 3h | 2026-02-19 A | 2026-02-20 A | 13 | 100% |  |
| 15 | 1.1.5 | **Costes** | 0.75d | 2026-02-20 A | 2026-02-23 A |  | 100% |  |
| 16 |  | Redactar plan de gestión de costes | 3h | 2026-02-20 A | 2026-02-23 A | 14 | 100% |  |
| 17 | 1.1.6 | **Cronograma** | 0.5d | 2026-02-23 A | 2026-02-23 A |  | 100% |  |
| 18 |  | Redactar plan de gestión del cronograma | 2h | 2026-02-23 A | 2026-02-23 A | 16 | 100% |  |
| 19 | 1.1.7 | **Riesgos** | 2d | 2026-02-23 A | 2026-02-25 A |  | 100% |  |
| 20 |  | Redactar plan de gestión de riesgos | 2h | 2026-02-23 A | 2026-02-24 A | 18 | 100% |  |
| 21 |  | Redacción del registro de riesgos | 6h | 2026-02-24 A | 2026-02-25 A | 20 | 100% |  |
| 22 | 1.1.8 | **Calidad** | 0.75d | 2026-02-25 A | 2026-02-26 A |  | 100% |  |
| 23 |  | Redactar plan de gestión de calidad | 3h | 2026-02-25 A | 2026-02-26 A | 21 | 100% |  |
| 24 | 1.1.9 | **Seguimiento** | 77d | 2026-02-02 A | 2026-05-19 |  | 9% | 1d |
| 25 |  | Redacción del registro de incidencias (Sprint 1) | 0.75h | 2026-03-24 A | 2026-03-24 A | 152 | 100% |  |
| 26 |  | Redacción del registro de incidencias (Sprint 2) | 0.75h | 2026-04-14 | 2026-04-14 | 180 |  | 26.56d |
| 27 |  | Redacción del registro de incidencias (Sprint 3) | 0.75h | 2026-05-08 | 2026-05-08 | 196 |  | 8.06d |
| 28 |  | Redacción del registro de incidencias (Sprint 4) | 0.75h | 2026-05-19 | 2026-05-19 | 275 |  | 0.06d |
| 29 |  | Redacción del registro de decisiones (Sprint 1) | 0.75h | 2026-03-24 A | 2026-03-24 A | 152 | 100% |  |
| 30 |  | Redacción del registro de decisiones (Sprint 2) | 0.75h | 2026-04-14 | 2026-04-14 | 180 |  | 26.56d |
| 31 |  | Redacción del registro de decisiones (Sprint 3) | 0.75h | 2026-05-08 | 2026-05-08 | 196 |  | 8.06d |
| 32 |  | Redacción del registro de decisiones (Sprint 4) | 0.75h | 2026-05-19 | 2026-05-19 | 275 |  | 0.06d |
| 33 |  | Redacción del registro de cambios (Sprint 1) | 0.75h | 2026-03-24 A | 2026-03-24 A | 152 | 100% |  |
| 34 |  | Redacción del registro de cambios (Sprint 2) | 0.75h | 2026-04-14 | 2026-04-14 | 180 |  | 26.56d |
| 35 |  | Redacción del registro de cambios (Sprint 3) | 0.75h | 2026-05-08 | 2026-05-08 | 196 |  | 8.06d |
| 36 |  | Redacción del registro de cambios (Sprint 4) | 0.75h | 2026-05-19 | 2026-05-19 | 275 |  | 0.06d |
| 37 |  | Reuniones internas del equipo | 16h | 2026-02-02 | 2026-02-05 |  |  | 74d |
| 38 |  | Reuniones con el tutor | 8h | 2026-02-02 | 2026-02-03 |  |  | 76d |
| 39 |  | Sprint Review (Sprint 1) | 1h | 2026-03-24 A | 2026-03-24 A | 152 | 100% |  |
| 40 |  | Sprint Review (Sprint 2) | 1h | 2026-04-14 | 2026-04-14 | 180 |  | 0d |
| 41 |  | Sprint Review (Sprint 3) | 1h | 2026-05-08 | 2026-05-08 | 196 |  | 0d |
| 42 |  | Sprint Review (Sprint 4) | 1h | 2026-05-19 | 2026-05-19 | 275 |  | 0d |
| 43 | 2 | **Núcleo jugable** | 47.5d | 2026-02-26 A | 2026-05-04 |  | 34% | 12d |
| 44 | 2.1 | **Sistema del jugador** | 41.75d | 2026-02-26 A | 2026-04-27 |  | 73% | 17.75d |
| 45 | 2.1.1 | **Diseño funcional** | 2.5d | 2026-02-26 A | 2026-03-02 A |  | 100% |  |
| 46 |  | Definir atributos y habilidades base del jugador | 3h | 2026-02-26 A | 2026-02-27 A | 23 | 100% |  |
| 47 |  | Especificar acciones disponibles | 3h | 2026-02-27 A | 2026-02-27 A | 46 | 100% |  |
| 48 |  | Definir de interacciones posibles con el entorno | 2h | 2026-03-02 A | 2026-03-02 A | 47 | 100% |  |
| 49 |  | Establecer limitaciones | 2h | 2026-03-02 A | 2026-03-02 A | 48 | 100% |  |
| 50 | 2.1.2 | **Movimiento base** | 2d | 2026-03-02 A | 2026-03-04 A |  | 100% |  |
| 51 |  | Implementar movimiento lateral | 3h | 2026-03-02 A | 2026-03-03 A | 48 | 100% |  |
| 52 |  | Implementar salto | 4h | 2026-03-03 A | 2026-03-04 A | 51 | 100% |  |
| 53 |  | Implementar doble salto | 4h | 2026-03-03 A | 2026-03-04 A | 51 | 100% |  |
| 54 |  | Implementar dash | 5h | 2026-03-03 A | 2026-03-04 A | 51 | 100% |  |
| 55 | 2.1.3 | **Sistema de combate básico** | 1.25d | 2026-03-03 A | 2026-03-04 A |  | 100% |  |
| 56 |  | Implementar ataque cuerpo a cuerpo | 5h | 2026-03-03 A | 2026-03-04 A | 51 | 100% |  |
| 57 |  | Implementar deteccion de impactos | 5h | 2026-03-03 A | 2026-03-04 A | 51 | 100% |  |
| 58 |  | Integrar con sistema de daño | 5h | 2026-03-03 A | 2026-03-04 A | 51 | 100% |  |
| 59 | 2.1.4 | **Sistema de poderes** | 2.75d | 2026-03-11 A | 2026-03-13 A |  | 100% |  |
| 60 |  | Implementar sistema de cambio de poderes | 5h | 2026-03-11 A | 2026-03-12 A | 68 | 100% |  |
| 61 |  | Implementar poder de velocidad | 6h | 2026-03-12 A | 2026-03-13 A | 60 | 100% |  |
| 62 |  | Implementar poder de fuerza | 6h | 2026-03-12 A | 2026-03-13 A | 60 | 100% |  |
| 63 |  | Implementar poder de escudo | 6h | 2026-03-12 A | 2026-03-13 A | 60 | 100% |  |
| 64 | 2.1.5 | **Sistema de vida y daño del jugador** | 4.75d | 2026-03-04 A | 2026-03-11 A |  | 100% |  |
| 65 |  | Implementar sistema de salud | 5h | 2026-03-04 A | 2026-03-05 A | 58 | 100% |  |
| 66 |  | Implementar sistema de daño infligido | 5h | 2026-03-05 A | 2026-03-06 A | 65 | 100% |  |
| 67 |  | Implementar invulnerabilidad temporal | 4h | 2026-03-09 A | 2026-03-09 A | 66 | 100% |  |
| 68 |  | Implementar muerte y reaparición | 5h | 2026-03-10 A | 2026-03-11 A | 67 | 100% |  |
| 69 | 2.1.6 | **Arte y animaciones del jugador** | 5.5d | 2026-04-17 | 2026-04-27 |  |  | 0d |
| 70 |  | Crear sprite base del jugador | 6h | 2026-04-17 | 2026-04-21 | 151 |  | 0d |

| ID | WBS | Task | Duration | Start | Finish | Predecessors | Complete | Total float |
| --- | --- | --- | --- | --- | --- | --- | --- | --- |
| 71 |  | Animar estado de reposo | 4h | 2026-04-21 | 2026-04-22 | 70 |  | 1d |
| 72 |  | Animar movimientos | 8h | 2026-04-21 | 2026-04-23 | 70 |  | 0d |
| 73 |  | Animar ataques | 4h | 2026-04-21 | 2026-04-22 | 70 |  | 1d |
| 74 |  | Animar recepción de daño | 3h | 2026-04-23 | 2026-04-23 | 73, 72, 71 |  | 0d |
| 75 |  | Crear variantes según poderes | 5h | 2026-04-24 | 2026-04-27 | 74 |  | 17.75d |
| 76 | 2.2 | **Sistema de enemigos comunes** | 43.25d | 2026-02-27 A | 2026-04-29 |  | 63% | 0d |
| 77 | 2.2.1 | **Diseño de arquetipos** | 2.75d | 2026-02-27 A | 2026-03-03 A |  | 100% |  |
| 78 |  | Diseñar enemigos de cada nivel | 6h | 2026-02-27 A | 2026-03-02 A | 46 | 100% |  |
| 79 |  | Especificar comportamientos | 3h | 2026-03-02 A | 2026-03-03 A | 78 | 100% |  |
| 80 |  | Definir estadísticas base | 2h | 2026-03-03 A | 2026-03-03 A | 79 | 100% |  |
| 81 | 2.2.2 | **Programacion de IA básica** | 10.5d | 2026-03-04 A | 2026-03-18 A |  | 100% |  |
| 82 |  | Implementar detección del jugador | 5h | 2026-03-09 A | 2026-03-10 A | 83 | 100% |  |
| 83 |  | Implementar movimiento | 12h | 2026-03-04 A | 2026-03-06 A | 80 | 100% |  |
| 84 |  | Implementar ataques | 20h | 2026-03-10 A | 2026-03-17 A | 82 | 100% |  |
| 85 |  | Implementar gestión de estados | 5h | 2026-03-17 A | 2026-03-18 A | 84, 165 | 100% |  |
| 86 | 2.2.3 | **Sistema de spawn y despawn** | 2d | 2026-03-18 A | 2026-03-20 A |  | 100% |  |
| 87 |  | Implementar sistemas de spawn de enemigos | 4h | 2026-03-18 A | 2026-03-19 A | 85 | 100% |  |
| 88 |  | Implementar despawn automático de enemigos | 4h | 2026-03-19 A | 2026-03-20 A | 87 | 100% |  |
| 89 | 2.2.4 | **Sistema de vida y daño de los enemigos** | 18.25d | 2026-03-20 A | 2026-04-15 |  | 27% | 0d |
| 90 |  | Implementar estadísticas de enemigos de nivel 1 | 3h | 2026-03-20 A | 2026-03-23 A | 88 | 100% |  |
| 91 |  | Implementar estadísticas de enemigos de nivel 2 | 3h | 2026-03-25 | 2026-03-25 | 39 |  | 0.25d |
| 92 |  | Implementar estadísticas de enemigos de nivel 3 | 3h | 2026-04-14 | 2026-04-15 | 40 |  | 0d |
| 93 |  | Implementar estadísticas de enemigos de nivel final | 2h | 2026-04-15 | 2026-04-15 | 92 |  | 0d |
| 94 | 2.2.5 | **Arte y animaciones de enemigos** | 3.5d | 2026-04-24 | 2026-04-29 |  |  | 0d |
| 95 |  | Crear sprites y animar enemigos de nivel 1 | 8h | 2026-04-24 | 2026-04-27 | 74 |  | 0d |
| 96 |  | Crear sprites y animar enemigos de nivel 2 | 8h | 2026-04-24 | 2026-04-27 | 74 |  | 0d |
| 97 |  | Crear sprites y animar enemigos de nivel 3 | 8h | 2026-04-24 | 2026-04-27 | 74 |  | 0d |
| 98 |  | Crear sprites y animar enemigos de nivel final | 6h | 2026-04-28 | 2026-04-29 | 97, 96, 95 |  | 0d |
| 99 | 2.3 | **Sistema de mini-jefes adaptativo** | 25.5d | 2026-03-25 | 2026-04-30 |  |  | 0.25d |
| 100 | 2.3.1 | **Diseño mecánico** | 11.5d | 2026-03-25 | 2026-04-10 |  |  | 0.25d |
| 101 |  | Definir patrones de ataque base de Umbra | 6h | 2026-03-25 | 2026-03-27 | 91 |  | 0.25d |
| 102 |  | Implementar recompensas tras derrota de Umbra | 10h | 2026-04-07 | 2026-04-10 | 104, 105 |  | 0.25d |
| 103 | 2.3.2 | **Implementación del modelo de IA** | 7.5d | 2026-03-27 | 2026-04-07 |  |  | 0.25d |
| 104 |  | Desarrollar modelo de IA para aprendizaje | 30h | 2026-03-27 | 2026-04-07 | 101 |  | 0.25d |
| 105 |  | Implementar modelo en la toma de decisiones | 15h | 2026-03-27 | 2026-04-01 | 101 |  | 4d |
| 106 | 2.3.3 | **Sistema de evolución** | 3d | 2026-03-30 | 2026-04-02 |  |  | 0d |
| 107 |  | Implementar modificación de atributos | 5h | 2026-03-30 | 2026-03-31 | 117 |  | 36.25d |
| 108 |  | Implementar cambio de comportamiento | 12h | 2026-03-30 | 2026-04-02 | 117 |  | 0d |
| 109 |  | Implementar condiciones de activación | 3h | 2026-03-30 | 2026-03-31 | 117 |  | 36.75d |
| 110 | 2.3.4 | **Arte y animaciones del mini-feje** | 2.25d | 2026-04-28 | 2026-04-30 |  |  | 14.75d |
| 111 |  | Crear Sprite base de Umbra | 5h | 2026-04-28 | 2026-04-29 | 95 |  | 15.75d |
| 112 |  | Crear variantes evolutivas | 3h | 2026-04-28 | 2026-04-28 | 95 |  | 16.25d |
| 113 |  | Animar ataques, daño y derrota | 9h | 2026-04-28 | 2026-04-30 | 95 |  | 14.75d |
| 114 | 2.4 | **Sistema jefes** | 29.25d | 2026-03-23 A | 2026-05-01 |  | 5% | 13.5d |
| 115 | 2.4.1 | **Diseño de patrones** | 21.25d | 2026-03-23 A | 2026-04-21 |  | 22% | 18.5d |
| 116 |  | Definir patrones del Guardian de Hielo | 2h | 2026-03-23 A | 2026-03-23 A | 90 | 100% |  |
| 117 |  | Definir patrones del Coloso de Ceniza | 2h | 2026-03-30 | 2026-03-30 | 121 |  | 0d |
| 118 |  | Definir patrones de la Tempestad Dorada | 2h | 2026-04-14 | 2026-04-14 | 40 |  | 18.5d |
| 119 |  | Definir patrones del Vacío | 3h | 2026-04-20 | 2026-04-21 | 123 |  | 18.5d |
| 120 | 2.4.2 | **Programación de comportamiento** | 22.5d | 2026-03-25 | 2026-04-24 |  |  | 0d |
| 121 |  | Implementar al Guardian de Hielo | 12h | 2026-03-25 | 2026-03-27 | 39 |  | 0d |
| 122 |  | Implementar al Coloso de Ceniza | 10h | 2026-04-03 | 2026-04-07 | 127 |  | 0d |
| 123 |  | Implementar a la Tempestad Dorada | 12h | 2026-04-15 | 2026-04-20 | 128 |  | 18.5d |
| 124 |  | Implementar al Vacío | 12h | 2026-04-21 | 2026-04-24 | 119 |  | 18.5d |
| 125 | 2.4.3 | **Sistema de puntos débiles** | 17d | 2026-03-23 A | 2026-04-15 |  | 33% | 18.5d |
| 126 |  | Implementar zonas de vulnerabilidad del Guardian de Hielo | 3h | 2026-03-23 A | 2026-03-24 A | 116 | 100% |  |
| 127 |  | Implementar zonas de vulnerabilidad del Coloso de Ceniza | 3h | 2026-04-02 | 2026-04-03 | 108 |  | 0d |
| 128 |  | Implementar zonas de vulnerabilidad de la Tempestad Dorada | 3h | 2026-04-15 | 2026-04-15 | 118 |  | 18.5d |
| 129 | 2.4.4 | **Arte y animaciones de los jefes** | 2d | 2026-04-29 | 2026-05-01 |  |  | 0d |
| 130 |  | Crear sprite y animaciones del Guardian de Hielo | 8h | 2026-04-29 | 2026-05-01 | 98 |  | 0d |
| 131 |  | Crear sprite y animaciones del Coloso de Ceniza | 8h | 2026-04-29 | 2026-05-01 | 98 |  | 0d |
| 132 |  | Crear sprite y animaciones de la Tempestad Dorada | 8h | 2026-04-29 | 2026-05-01 | 98 |  | 0d |
| 133 |  | Crear sprite y animaciones del Vacío | 8h | 2026-04-29 | 2026-05-01 | 98 |  | 0d |
| 134 | 2.5 | **Sistema de niveles** | 43.5d | 2026-03-04 A | 2026-05-04 |  | 24% | 12d |
| 135 | 2.5.1 | **Diseño de layout** | 32.75d | 2026-03-04 A | 2026-04-20 |  | 33% | 22.75d |
| 136 |  | Diseñar layout del nivel tutorial | 2h | 2026-03-04 A | 2026-03-04 A | 58 | 100% |  |
| 137 |  | Diseñar layout del nivel 1 | 4h | 2026-03-06 A | 2026-03-09 A | 142 | 100% |  |
| 138 |  | Diseñar layout del nivel 2 | 4h | 2026-04-07 | 2026-04-08 | 122 |  | 0d |
| 139 |  | Diseñar layout del nivel 3 | 4h | 2026-04-15 | 2026-04-16 | 93 |  | 24.25d |
| 140 |  | Diseñar layout del nivel final | 4h | 2026-04-17 | 2026-04-20 | 145 |  | 22.75d |

| ID | WBS | Task | Duration | Start | Finish | Predecessors | Complete | Total float |
| --- | --- | --- | --- | --- | --- | --- | --- | --- |
| 141 | 2.5.2 | **Implementación de tilemaps** | 32.75d | 2026-03-05 A | 2026-04-20 |  | 40% | 22.25d |
| 142 |  | Implementar tilemap del nivel tutorial | 6h | 2026-03-05 A | 2026-03-06 A | 136 | 100% |  |
| 143 |  | Implementar tilemap del nivel 1 | 6h | 2026-03-09 A | 2026-03-10 A | 137 | 100% |  |
| 144 |  | Implementar tilemap del nivel 2 | 6h | 2026-04-08 | 2026-04-10 | 138 |  | 0d |
| 145 |  | Implementar tilemap del nivel 3 | 6h | 2026-04-15 | 2026-04-17 | 93 |  | 0d |
| 146 |  | Implementar tilemap del nivel final | 6h | 2026-04-17 | 2026-04-20 | 145 |  | 22.25d |
| 147 | 2.5.3 | **Integración de enemigos y jefes** | 27.75d | 2026-03-11 A | 2026-04-17 |  | 27% | 23.25d |
| 148 |  | Colocar enemigos del nivel 1 | 2h | 2026-03-11 A | 2026-03-11 A | 143 | 100% |  |
| 149 |  | Colocar enemigos del nivel 2 | 2h | 2026-04-13 | 2026-04-13 | 166 |  | 27d |
| 150 |  | Colocar enemigos del nivel 3 | 2h | 2026-04-15 | 2026-04-16 | 93 |  | 24.75d |
| 151 |  | Colocar enemigos del nivel final | 2h | 2026-04-17 | 2026-04-17 | 145 |  | 0d |
| 152 |  | Configurar triggers de jefes (Nivel 1) | 1h | 2026-03-24 A | 2026-03-24 A | 126 | 100% |  |
| 153 |  | Configurar triggers de jefes (Nivel 2) | 1h | 2026-04-13 | 2026-04-13 | 149 |  | 27d |
| 154 |  | Configurar triggers de jefes (Nivel 3) | 0.5h | 2026-04-15 | 2026-04-15 | 93 |  | 25.12d |
| 155 |  | Configurar triggers de jefes (Nivel final) | 0.5h | 2026-04-15 | 2026-04-15 | 93 |  | 25.12d |
| 156 | 2.5.4 | **Implementación de objetos y obstáculos** | 27.5d | 2026-03-11 A | 2026-04-17 |  | 25% | 23d |
| 157 |  | Implementar trampas (Nivel 1) | 1h | 2026-03-11 A | 2026-03-11 A | 148 | 100% |  |
| 158 |  | Implementar trampas (Nivel 2) | 1h | 2026-04-10 | 2026-04-10 | 144 |  | 0d |
| 159 |  | Implementar trampas (Nivel 3) | 1h | 2026-04-15 | 2026-04-15 | 93 |  | 25d |
| 160 |  | Implementar trampas (Nivel final) | 1h | 2026-04-17 | 2026-04-17 | 145 |  | 23d |
| 161 |  | Implementar plataformas especiales (Nivel 1) | 2h | 2026-03-11 A | 2026-03-12 A | 157 | 100% |  |
| 162 |  | Implementar plataformas especiales (Nivel 2) | 2h | 2026-04-10 | 2026-04-10 | 158, 102 |  | 0d |
| 163 |  | Implementar plataformas especiales (Nivel 3) | 2h | 2026-04-15 | 2026-04-16 | 93 |  | 24.75d |
| 164 |  | Implementar plataformas especiales (Nivel final) | 2h | 2026-04-17 | 2026-04-17 | 160, 145 |  | 23d |
| 165 |  | Implementar zonas de muerte instantánea (Nivel 1) | 1h | 2026-03-12 A | 2026-03-12 A | 161 | 100% |  |
| 166 |  | Implementar zonas de muerte instantánea (Nivel 2) | 1h | 2026-04-13 | 2026-04-13 | 162 |  | 0d |
| 167 |  | Implementar zonas de muerte instantánea (Nivel 3) | 1h | 2026-04-15 | 2026-04-15 | 93 |  | 25d |
| 168 |  | Implementar zonas de muerte instantánea (Nivel final) | 1h | 2026-04-17 | 2026-04-17 | 145 |  | 23.5d |
| 169 | 2.5.5 | **Arte y animación del entorno** | 1.5d | 2026-05-01 | 2026-05-04 |  |  | 0d |
| 170 |  | Diseñar fondo y efectos del nivel tutorial | 6h | 2026-05-01 | 2026-05-04 | 133, 132, 131, 130 |  | 12d |
| 171 |  | Diseñar fondo y efectos del nivel 1 | 6h | 2026-05-01 | 2026-05-04 | 130, 131, 132, 133 |  | 0d |
| 172 |  | Diseñar fondo y efectos del nivel 2 | 6h | 2026-05-01 | 2026-05-04 | 130, 131, 132, 133 |  | 0d |
| 173 |  | Diseñar fondo y efectos del nivel 3 | 6h | 2026-05-01 | 2026-05-04 | 130, 131, 132, 133 |  | 0d |
| 174 |  | Diseñar fondo y efectos del nivel final | 6h | 2026-05-01 | 2026-05-04 | 130, 131, 132, 133 |  | 0d |
| 175 | 3 | **Sistemas globales** | 26d | 2026-04-13 | 2026-05-19 |  |  | 0d |
| 176 | 3.1 | **Sistema de interfaz y menús** | 19.75d | 2026-04-13 | 2026-05-08 |  |  | 0d |
| 177 | 3.1.1 | **HUD** | 1.5d | 2026-04-13 | 2026-04-14 |  |  | 0d |
| 178 |  | Implementar indicadores de salud | 6h | 2026-04-13 | 2026-04-14 | 166 |  | 26.25d |
| 179 |  | Implementar indicador de poderes | 6h | 2026-04-13 | 2026-04-14 | 166 |  | 26.25d |
| 180 |  | Implementar recolección de objetos clave | 4h | 2026-04-13 | 2026-04-14 | 166 |  | 0d |
| 181 | 3.1.2 | **Pantalla de inicio** | 1.5d | 2026-05-05 | 2026-05-06 |  |  | 0d |
| 182 |  | Diseñar interfaz de inicio | 4h | 2026-05-05 | 2026-05-05 | 171, 172, 173, 174 |  | 0.5d |
| 183 |  | Programar navegación de la pantalla de inicio | 6h | 2026-05-05 | 2026-05-06 | 171, 172, 173, 174 |  | 0d |
| 184 | 3.1.3 | **Pantalla de pausa** | 1d | 2026-05-06 | 2026-05-07 |  |  | 0d |
| 185 |  | Diseñar interfaz de pausa | 4h | 2026-05-06 | 2026-05-07 | 182, 183 |  | 8.75d |
| 186 |  | Programar lógica de pausa | 4h | 2026-05-06 | 2026-05-07 | 182, 183 |  | 8.75d |
| 187 |  | Programar navegación de menú | 4h | 2026-05-06 | 2026-05-07 | 182, 183 |  | 0d |
| 188 | 3.1.4 | **Pantalla de ajustes** | 2.5d | 2026-05-06 | 2026-05-08 |  |  | 8d |
| 189 |  | Diseñar interfaz de ajustes | 3h | 2026-05-07 | 2026-05-08 | 185, 186, 187 |  | 8.75d |
| 190 |  | Programar lógica de las configuraciones | 10h | 2026-05-06 | 2026-05-08 | 183 |  | 8d |
| 191 | 3.1.5 | **Pantalla de carga** | 1.5d | 2026-05-07 | 2026-05-08 |  |  | 8d |
| 192 |  | Diseñar pantalla de carga | 6h | 2026-05-07 | 2026-05-08 | 187 |  | 8d |
| 193 |  | Implementar consejos de juego | 5h | 2026-05-07 | 2026-05-08 | 187 |  | 8.25d |
| 194 | 3.1.6 | **Pantalla de créditos** | 1.25d | 2026-05-07 | 2026-05-08 |  |  | 0d |
| 195 |  | Diseñar pantalla de créditos | 3h | 2026-05-07 | 2026-05-08 | 187 |  | 8.75d |
| 196 |  | Programar lógica de la pantalla de créditos | 5h | 2026-05-07 | 2026-05-08 | 187 |  | 0d |
| 197 | 3.2 | **Sistema de guardado y progresión** | 3.5d | 2026-05-13 | 2026-05-19 |  |  | 0d |
| 198 | 3.2.1 | **Sistema de guardado automático** | 2d | 2026-05-13 | 2026-05-15 |  |  | 0d |
| 199 |  | Implementar lógica de guardado | 8h | 2026-05-13 | 2026-05-15 | 262 |  | 3.25d |
| 200 |  | Implementar indicador visual | 2h | 2026-05-13 | 2026-05-14 | 262 |  | 0d |
| 201 |  | Implementar mecanismo anti-corrupcion | 4h | 2026-05-13 | 2026-05-14 | 262 |  | 4.25d |
| 202 | 3.2.2 | **Sistema de checkpoints** | 3d | 2026-05-13 | 2026-05-18 |  |  | 2.25d |
| 203 |  | Implementar lógica de checkpoints | 12h | 2026-05-13 | 2026-05-18 | 262 |  | 2.25d |
| 204 | 3.2.3 | **Persistencia de habilidades** | 2d | 2026-05-13 | 2026-05-15 |  |  | 3.25d |
| 205 |  | Implementar guardado y carga de habilidades | 8h | 2026-05-13 | 2026-05-15 | 262 |  | 3.25d |
| 206 | 3.2.4 | **Persistencia de progreso** | 3d | 2026-05-14 | 2026-05-19 |  |  | 1.75d |
| 207 |  | Implementar sistema de escritura y lectura de datos | 12h | 2026-05-14 | 2026-05-19 | 200 |  | 1.75d |
| 208 | 3.3 | **Sistema de leaderboard y analíticas** | 3d | 2026-05-14 | 2026-05-19 |  |  | 1.75d |
| 209 | 3.3.1 | **Registro de métricas** | 3d | 2026-05-14 | 2026-05-19 |  |  | 1.75d |
| 210 |  | Implementar captura de métricas | 12h | 2026-05-14 | 2026-05-19 | 200 |  | 1.75d |

| ID | WBS | Task | Duration | Start | Finish | Predecessors | Total float |
| --- | --- | --- | --- | --- | --- | --- | --- |
| 211 | 3.3.2 | **Identificación de jugadores** | 1d | 2026-05-14 | 2026-05-15 |  | 3.75d |
| 212 |  | Implementar introducción de nickname | 3h | 2026-05-14 | 2026-05-14 | 200 | 4d |
| 213 |  | Implementar generación de UUID | 4h | 2026-05-14 | 2026-05-15 | 200 | 3.75d |
| 214 | 3.3.3 | **Envío y alamcenamiento de datos** | 2d | 2026-05-14 | 2026-05-18 |  | 2.75d |
| 215 |  | Configurar comunicación cliente-servidor | 8h | 2026-05-14 | 2026-05-18 | 200 | 2.75d |
| 216 |  | Implementar envío de métricas | 7h | 2026-05-14 | 2026-05-15 | 200 | 3d |
| 217 | 3.3.4 | **Visualización de leaderboard** | 2d | 2026-05-14 | 2026-05-18 |  | 2.75d |
| 218 |  | Diseñar interfaz de clasificación | 4h | 2026-05-14 | 2026-05-15 | 200 | 3.75d |
| 219 |  | Implementar listas ordenadas según métricas | 8h | 2026-05-14 | 2026-05-18 | 200 | 2.75d |
| 220 | 3.4 | **Sistema de audio** | 1.25d | 2026-05-14 | 2026-05-15 |  | 0d |
| 221 | 3.4.1 | **Música de niveles** | 1d | 2026-05-14 | 2026-05-15 |  | 3.75d |
| 222 |  | Integrar tema musical del tutorial | 4h | 2026-05-14 | 2026-05-15 | 200 | 3.75d |
| 223 |  | Integrar tema musical del nivel 1 | 4h | 2026-05-14 | 2026-05-15 | 200 | 3.75d |
| 224 |  | Integrar tema musical del nivel 2 | 4h | 2026-05-14 | 2026-05-15 | 200 | 3.75d |
| 225 |  | Integrar tema musical del nivel 3 | 4h | 2026-05-14 | 2026-05-15 | 200 | 3.75d |
| 226 |  | Integrar tema musical del nivel final | 4h | 2026-05-14 | 2026-05-15 | 200 | 3.75d |
| 227 | 3.4.2 | **Música de jefes** | 1.25d | 2026-05-14 | 2026-05-15 |  | 3.5d |
| 228 |  | Integrar tema musical de Umbra | 5h | 2026-05-14 | 2026-05-15 | 200 | 3.5d |
| 229 |  | Integrar tema musical del Guardián de Hielo | 5h | 2026-05-14 | 2026-05-15 | 200 | 3.5d |
| 230 |  | Integrar tema musical del Coloso de Ceniza | 5h | 2026-05-14 | 2026-05-15 | 200 | 3.5d |
| 231 |  | Integrar tema musical de la Tempestad Dorada | 5h | 2026-05-14 | 2026-05-15 | 200 | 3.5d |
| 232 |  | Integrar tema musical del Vacío | 5h | 2026-05-14 | 2026-05-15 | 200 | 3.5d |
| 233 | 3.4.3 | **Música de pantallas secundarias** | 1d | 2026-05-14 | 2026-05-15 |  | 3.75d |
| 234 |  | Implementar tema musical de inicio | 4h | 2026-05-14 | 2026-05-15 | 200 | 3.75d |
| 235 |  | Implementar tema musical de pausa | 4h | 2026-05-14 | 2026-05-15 | 200 | 3.75d |
| 236 |  | Implementar tema musical de créditos | 4h | 2026-05-14 | 2026-05-15 | 200 | 3.75d |
| 237 | 3.4.4 | **Efectos de sonido** | 1d | 2026-05-14 | 2026-05-15 |  | 3.75d |
| 238 |  | Implementar efectos de sonido de movimiento | 4h | 2026-05-14 | 2026-05-15 | 200 | 3.75d |
| 239 |  | Implementar efectos de sonido de combate | 4h | 2026-05-14 | 2026-05-15 | 200 | 3.75d |
| 240 |  | Implementar efectos de sonido de entorno | 4h | 2026-05-14 | 2026-05-15 | 200 | 3.75d |
| 241 |  | Implementar efectos de sonido de menús | 4h | 2026-05-14 | 2026-05-15 | 200 | 3.75d |
| 242 | 3.4.5 | **Sistema de control de volumen** | 1.25d | 2026-05-14 | 2026-05-15 |  | 0d |
| 243 |  | Programar buses de audio | 5h | 2026-05-14 | 2026-05-15 | 200 | 3.5d |
| 244 |  | Vincular controles de audio | 4h | 2026-05-14 | 2026-05-15 | 200 | 0d |
| 245 |  | Implementar persistencia de volumen | 3h | 2026-05-14 | 2026-05-14 | 200 | 4d |
| 246 | 4 | **Calidad** | 74d | 2026-02-02 | 2026-05-14 |  | 4d |
| 247 | 4.1 | **Pruebas y validación** | 74d | 2026-02-02 | 2026-05-14 |  | 4d |
| 248 | 4.1.1 | **Plan de pruebas** | 1.5d | 2026-05-11 | 2026-05-12 |  | 6.5d |
| 249 |  | Definir estrategia de QA | 6h | 2026-05-11 | 2026-05-12 | 41 | 6.5d |
| 250 |  | Establecer casos de uso a probar | 5h | 2026-05-11 | 2026-05-12 | 41 | 6.75d |
| 251 | 4.1.2 | **Pruebas funcionales** | 2.5d | 2026-05-11 | 2026-05-13 |  | 0d |
| 252 |  | Probar navegación de menús | 5h | 2026-05-11 | 2026-05-12 | 41 | 0.25d |
| 253 |  | Probar persistencia de guardado | 6h | 2026-05-11 | 2026-05-12 | 41 | 0d |
| 254 |  | Probar carga de escenas | 6h | 2026-05-11 | 2026-05-12 | 41 | 0d |
| 255 |  | Probar mecánicas principales | 10h | 2026-05-11 | 2026-05-13 | 41 | 5.5d |
| 256 | 4.1.3 | **Pruebas de jugabilidad** | 72d | 2026-02-02 | 2026-05-12 |  | 6d |
| 257 |  | Realizar sesiones de playtesting | 15h | 2026-02-02 | 2026-02-05 |  | 74.25d |
| 258 |  | Ajustar curva de dificultad | 8h | 2026-05-11 | 2026-05-12 | 41 | 6d |
| 259 |  | Ajustar respuesta de controles | 5h | 2026-05-11 | 2026-05-12 | 41 | 0.25d |
| 260 | 4.1.4 | **Optimización** | 2.5d | 2026-05-12 | 2026-05-14 |  | 0d |
| 261 |  | Analizar el rendimiento del juego | 10h | 2026-05-12 | 2026-05-14 | 252, 253, 254, 259 | 4d |
| 262 |  | Optimizar scripts | 5h | 2026-05-12 | 2026-05-13 | 259, 254, 253, 252 | 0d |
| 263 |  | Optimizar recursos gráficos | 5h | 2026-05-12 | 2026-05-13 | 259, 254, 253, 252 | 5.25d |
| 264 | 5 | **Entrega y cierre** | 78d | 2026-02-02 | 2026-05-20 |  | 0d |
| 265 | 5.1 | **Entrega de producto** | 0.75d | 2026-05-15 | 2026-05-15 |  | 0d |
| 266 | 5.1.1 | **Build jugable** | 0.75d | 2026-05-15 | 2026-05-15 |  | 0d |
| 267 |  | Compilar versión jugable para Windows | 3h | 2026-05-15 | 2026-05-15 | 244 | 0d |
| 268 |  | Verificar recursos incluidos | 3h | 2026-05-15 | 2026-05-15 | 244 | 0d |
| 269 |  | Crear instalador | 0.5h | 2026-05-15 | 2026-05-15 | 244 | 0.62d |
| 270 | 5.2 | **Documentación de cierre** | 78d | 2026-02-02 | 2026-05-20 |  | 0d |
| 271 | 5.2.1 | **Memoria** | 78d | 2026-02-02 | 2026-05-20 |  | 0d |
| 272 |  | Redacción de informe de cierre | 4h | 2026-05-20 | 2026-05-20 | 42, 36, 32, 28 | 0d |
| 273 |  | Redacción de la memoria | 70h | 2026-02-02 | 2026-02-25 |  | 60.5d |
| 274 | 5.2.2 | **Manuales** | 1.75d | 2026-05-18 | 2026-05-19 |  | 0d |
| 275 |  | Realizar manual de usuario para desarrolladores y usuarios finales | 7h | 2026-05-18 | 2026-05-19 | 269, 268, 267 | 0d |
| 276 |  | Entrega del Game Design Document | 0d | 2026-02-01 | 2026-02-01 |  | 1d |
| 277 |  | Entrega de Plan de Dirección del Proyecto | 0d | 2026-02-01 | 2026-02-01 |  | 26d |
| 278 |  | Core del Jugador (Prototipo Base) | 0d | 2026-02-01 | 2026-02-01 |  | 31d |
| 279 |  | Enemigos Básicos y Entorno Temprano | 0d | 2026-02-01 | 2026-02-01 |  | 36d |
| 280 |  | Integración del Modelo de IA (Umbra) | 0d | 2026-02-01 | 2026-02-01 |  | 51d |

| ID | Task | Duration | Start | Finish | Total float |
| --- | --- | --- | --- | --- | --- |
| 281 | Implementación de jefes finales | 0d | 2026-02-01 | 2026-02-01 | 61d |
| 282 | Estructura de Niveles (Greybox Completo) | 0d | 2026-02-01 | 2026-02-01 | 64d |
| 283 | Arte Integrado | 0d | 2026-02-01 | 2026-02-01 | 66d |
| 284 | Interfaz y Persistencia Local | 0d | 2026-02-01 | 2026-02-01 | 68d |
| 285 | Leaderboard Integrado | 0d | 2026-02-01 | 2026-02-01 | 70d |
| 286 | Audio Integrado | 0d | 2026-02-01 | 2026-02-01 | 71d |
| 287 | Fase de pruebas final terminada | 0d | 2026-02-01 | 2026-02-01 | 76d |
| 288 | Cierre y Entrega Final | 0d | 2026-02-01 | 2026-02-01 | 78d |

## Version 2 (data date 2026-03-24, saved 2026-04-22, file Rise of The Lost Colors - SPRINT 1.mpp)

Note of the change: Merge branch 'feature/persistencia' into feature/nivel-tutorial

Last finish stays 2026-05-20. Complete tasks 56 → 57.

Removed: 276 Entrega del Game Design Document; 277 Entrega de Plan de Dirección del Proyecto; 278 Core del Jugador (Prototipo Base); 279 Enemigos Básicos y Entorno Temprano; 280 Integración del Modelo de IA (Umbra); 281 Implementación de jefes finales; 282 Estructura de Niveles (Greybox Completo); 283 Arte Integrado; 284 Interfaz y Persistencia Local; 285 Leaderboard Integrado; 286 Audio Integrado; 287 Fase de pruebas final terminada; 288 Cierre y Entrega Final

Changed:

| ID | Task | Start | Finish | Complete | Total float |
| --- | --- | --- | --- | --- | --- |
| 1 | **Gestión y Planificación** |  |  | 65% → 70% |  |
| 2 | **Documentación** |  |  | 65% → 70% |  |
| 3 | **GDD** |  | 2026-02-12 A | 86% → 100% | 69.25d → none |
| 5 | Revisión y validación final del documento | 2026-02-11 A | 2026-02-12 A | 0% → 100% | 69.25d → none |

## Version 3 (data date 2026-04-13, saved 2026-06-10, file Rise of The Lost Colors - SPRINT 4.mpp)

Note of the change: Merge pull request #322 from javsorbla/feature/boss-umbra

Last finish stays 2026-05-20. Complete tasks 57 → 198.

Changed:

| ID | Task | Start | Finish | Complete | Total float |
| --- | --- | --- | --- | --- | --- |
| 1 | **Gestión y Planificación** |  | 2026-05-19 A | 70% → 100% | 1d → none |
| 2 | **Documentación** |  | 2026-05-19 A | 70% → 100% | 1d → none |
| 24 | **Seguimiento** |  | 2026-05-19 A | 9% → 100% | 1d → none |
| 26 | Redacción del registro de incidencias (Sprint 2) | 2026-04-14 A | 2026-04-14 A | 0% → 100% | 26.56d → none |
| 27 | Redacción del registro de incidencias (Sprint 3) | 2026-05-08 A | 2026-05-08 A | 0% → 100% | 8.06d → none |
| 28 | Redacción del registro de incidencias (Sprint 4) | 2026-05-19 A | 2026-05-19 A | 0% → 100% | 0.06d → none |
| 30 | Redacción del registro de decisiones (Sprint 2) | 2026-04-14 A | 2026-04-14 A | 0% → 100% | 26.56d → none |
| 31 | Redacción del registro de decisiones (Sprint 3) | 2026-05-08 A | 2026-05-08 A | 0% → 100% | 8.06d → none |
| 32 | Redacción del registro de decisiones (Sprint 4) | 2026-05-19 A | 2026-05-19 A | 0% → 100% | 0.06d → none |
| 34 | Redacción del registro de cambios (Sprint 2) | 2026-04-14 A | 2026-04-14 A | 0% → 100% | 26.56d → none |
| 35 | Redacción del registro de cambios (Sprint 3) | 2026-05-08 A | 2026-05-08 A | 0% → 100% | 8.06d → none |
| 36 | Redacción del registro de cambios (Sprint 4) | 2026-05-19 A | 2026-05-19 A | 0% → 100% | 0.06d → none |
| 37 | Reuniones internas del equipo | 2026-02-02 A | 2026-02-05 A | 0% → 100% | 74d → none |
| 38 | Reuniones con el tutor | 2026-02-02 A | 2026-02-03 A | 0% → 100% | 76d → none |
| 40 | Sprint Review (Sprint 2) | 2026-04-14 A | 2026-04-14 A | 0% → 100% | 0d → none |
| 41 | Sprint Review (Sprint 3) | 2026-05-08 A | 2026-05-08 A | 0% → 100% | 0d → none |
| 42 | Sprint Review (Sprint 4) | 2026-05-19 A | 2026-05-19 A | 0% → 100% | 0d → none |
| 43 | **Núcleo jugable** |  | 2026-05-04 A | 34% → 100% | 12d → none |
| 44 | **Sistema del jugador** |  | 2026-04-27 A | 73% → 100% | 17.75d → none |
| 69 | **Arte y animaciones del jugador** | 2026-04-17 A | 2026-04-27 A | 0% → 100% | 0d → none |
| 70 | Crear sprite base del jugador | 2026-04-17 A | 2026-04-21 A | 0% → 100% | 0d → none |
| 71 | Animar estado de reposo | 2026-04-21 A | 2026-04-22 A | 0% → 100% | 1d → none |
| 72 | Animar movimientos | 2026-04-21 A | 2026-04-23 A | 0% → 100% | 0d → none |
| 73 | Animar ataques | 2026-04-21 A | 2026-04-22 A | 0% → 100% | 1d → none |
| 74 | Animar recepción de daño | 2026-04-23 A | 2026-04-23 A | 0% → 100% | 0d → none |
| 75 | Crear variantes según poderes | 2026-04-24 A | 2026-04-27 A | 0% → 100% | 17.75d → none |
| 76 | **Sistema de enemigos comunes** |  | 2026-04-29 A | 63% → 100% | 0d → none |
| 89 | **Sistema de vida y daño de los enemigos** |  | 2026-04-15 A | 27% → 100% | 0d → none |
| 91 | Implementar estadísticas de enemigos de nivel 2 | 2026-03-25 A | 2026-03-25 A | 0% → 100% | 0.25d → none |
| 92 | Implementar estadísticas de enemigos de nivel 3 | 2026-04-14 A | 2026-04-15 A | 0% → 100% | 0d → none |
| 93 | Implementar estadísticas de enemigos de nivel final | 2026-04-15 A | 2026-04-15 A | 0% → 100% | 0d → none |
| 94 | **Arte y animaciones de enemigos** | 2026-04-24 A | 2026-04-29 A | 0% → 100% | 0d → none |
| 95 | Crear sprites y animar enemigos de nivel 1 | 2026-04-24 A | 2026-04-27 A | 0% → 100% | 0d → none |
| 96 | Crear sprites y animar enemigos de nivel 2 | 2026-04-24 A | 2026-04-27 A | 0% → 100% | 0d → none |
| 97 | Crear sprites y animar enemigos de nivel 3 | 2026-04-24 A | 2026-04-27 A | 0% → 100% | 0d → none |
| 98 | Crear sprites y animar enemigos de nivel final | 2026-04-28 A | 2026-04-29 A | 0% → 100% | 0d → none |
| 99 | **Sistema de mini-jefes adaptativo** | 2026-03-25 A | 2026-04-30 A | 0% → 100% | 0.25d → none |
| 100 | **Diseño mecánico** | 2026-03-25 A | 2026-04-10 A | 0% → 100% | 0.25d → none |
| 101 | Definir patrones de ataque base de Umbra | 2026-03-25 A | 2026-03-27 A | 0% → 100% | 0.25d → none |
| 102 | Implementar recompensas tras derrota de Umbra | 2026-04-07 A | 2026-04-10 A | 0% → 100% | 0.25d → none |
| 103 | **Implementación del modelo de IA** | 2026-03-27 A | 2026-04-07 A | 0% → 100% | 0.25d → none |
| 104 | Desarrollar modelo de IA para aprendizaje | 2026-03-27 A | 2026-04-07 A | 0% → 100% | 0.25d → none |
| 105 | Implementar modelo en la toma de decisiones | 2026-03-27 A | 2026-04-01 A | 0% → 100% | 4d → none |
| 106 | **Sistema de evolución** | 2026-03-30 A | 2026-04-02 A | 0% → 100% | 0d → none |
| 107 | Implementar modificación de atributos | 2026-03-30 A | 2026-03-31 A | 0% → 100% | 36.25d → none |
| 108 | Implementar cambio de comportamiento | 2026-03-30 A | 2026-04-02 A | 0% → 100% | 0d → none |
| 109 | Implementar condiciones de activación | 2026-03-30 A | 2026-03-31 A | 0% → 100% | 36.75d → none |
| 110 | **Arte y animaciones del mini-feje** | 2026-04-28 A | 2026-04-30 A | 0% → 100% | 14.75d → none |
| 111 | Crear Sprite base de Umbra | 2026-04-28 A | 2026-04-29 A | 0% → 100% | 15.75d → none |
| 112 | Crear variantes evolutivas | 2026-04-28 A | 2026-04-28 A | 0% → 100% | 16.25d → none |
| 113 | Animar ataques, daño y derrota | 2026-04-28 A | 2026-04-30 A | 0% → 100% | 14.75d → none |
| 114 | **Sistema jefes** |  | 2026-05-01 A | 5% → 100% | 13.5d → none |
| 115 | **Diseño de patrones** |  | 2026-04-21 A | 22% → 100% | 18.5d → none |
| 117 | Definir patrones del Coloso de Ceniza | 2026-03-30 A | 2026-03-30 A | 0% → 100% | 0d → none |
| 118 | Definir patrones de la Tempestad Dorada | 2026-04-14 A | 2026-04-14 A | 0% → 100% | 18.5d → none |
| 119 | Definir patrones del Vacío | 2026-04-20 A | 2026-04-21 A | 0% → 100% | 18.5d → none |
| 120 | **Programación de comportamiento** | 2026-03-25 A | 2026-04-24 A | 0% → 100% | 0d → none |
| 121 | Implementar al Guardian de Hielo | 2026-03-25 A | 2026-03-27 A | 0% → 100% | 0d → none |
| 122 | Implementar al Coloso de Ceniza | 2026-04-03 A | 2026-04-07 A | 0% → 100% | 0d → none |
| 123 | Implementar a la Tempestad Dorada | 2026-04-15 A | 2026-04-20 A | 0% → 100% | 18.5d → none |
| 124 | Implementar al Vacío | 2026-04-21 A | 2026-04-24 A | 0% → 100% | 18.5d → none |
| 125 | **Sistema de puntos débiles** |  | 2026-04-15 A | 33% → 100% | 18.5d → none |
| 127 | Implementar zonas de vulnerabilidad del Coloso de Ceniza | 2026-04-02 A | 2026-04-03 A | 0% → 100% | 0d → none |
| 128 | Implementar zonas de vulnerabilidad de la Tempestad Dorada | 2026-04-15 A | 2026-04-15 A | 0% → 100% | 18.5d → none |
| 129 | **Arte y animaciones de los jefes** | 2026-04-29 A | 2026-05-01 A | 0% → 100% | 0d → none |
| 130 | Crear sprite y animaciones del Guardian de Hielo | 2026-04-29 A | 2026-05-01 A | 0% → 100% | 0d → none |
| 131 | Crear sprite y animaciones del Coloso de Ceniza | 2026-04-29 A | 2026-05-01 A | 0% → 100% | 0d → none |
| 132 | Crear sprite y animaciones de la Tempestad Dorada | 2026-04-29 A | 2026-05-01 A | 0% → 100% | 0d → none |
| 133 | Crear sprite y animaciones del Vacío | 2026-04-29 A | 2026-05-01 A | 0% → 100% | 0d → none |
| 134 | **Sistema de niveles** |  | 2026-05-04 A | 24% → 100% | 12d → none |

| ID | Task | Start | Finish | Complete | Total float |
| --- | --- | --- | --- | --- | --- |
| 135 | **Diseño de layout** |  | 2026-04-20 A | 33% → 100% | 22.75d → none |
| 138 | Diseñar layout del nivel 2 | 2026-04-07 A | 2026-04-08 A | 0% → 100% | 0d → none |
| 139 | Diseñar layout del nivel 3 | 2026-04-15 A | 2026-04-16 A | 0% → 100% | 24.25d → none |
| 140 | Diseñar layout del nivel final | 2026-04-17 A | 2026-04-20 A | 0% → 100% | 22.75d → none |
| 141 | **Implementación de tilemaps** |  | 2026-04-20 A | 40% → 100% | 22.25d → none |
| 144 | Implementar tilemap del nivel 2 | 2026-04-08 A | 2026-04-10 A | 0% → 100% | 0d → none |
| 145 | Implementar tilemap del nivel 3 | 2026-04-15 A | 2026-04-17 A | 0% → 100% | 0d → none |
| 146 | Implementar tilemap del nivel final | 2026-04-17 A | 2026-04-20 A | 0% → 100% | 22.25d → none |
| 147 | **Integración de enemigos y jefes** |  | 2026-04-17 A | 27% → 100% | 23.25d → none |
| 149 | Colocar enemigos del nivel 2 | 2026-04-13 A | 2026-04-13 A | 0% → 100% | 27d → none |
| 150 | Colocar enemigos del nivel 3 | 2026-04-15 A | 2026-04-16 A | 0% → 100% | 24.75d → none |
| 151 | Colocar enemigos del nivel final | 2026-04-17 A | 2026-04-17 A | 0% → 100% | 0d → none |
| 153 | Configurar triggers de jefes (Nivel 2) | 2026-04-13 A | 2026-04-13 A | 0% → 100% | 27d → none |
| 154 | Configurar triggers de jefes (Nivel 3) | 2026-04-15 A | 2026-04-15 A | 0% → 100% | 25.12d → none |
| 155 | Configurar triggers de jefes (Nivel final) | 2026-04-15 A | 2026-04-15 A | 0% → 100% | 25.12d → none |
| 156 | **Implementación de objetos y obstáculos** |  | 2026-04-17 A | 25% → 100% | 23d → none |
| 158 | Implementar trampas (Nivel 2) | 2026-04-10 A | 2026-04-10 A | 0% → 100% | 0d → none |
| 159 | Implementar trampas (Nivel 3) | 2026-04-15 A | 2026-04-15 A | 0% → 100% | 25d → none |
| 160 | Implementar trampas (Nivel final) | 2026-04-17 A | 2026-04-17 A | 0% → 100% | 23d → none |
| 162 | Implementar plataformas especiales (Nivel 2) | 2026-04-10 A | 2026-04-10 A | 0% → 100% | 0d → none |
| 163 | Implementar plataformas especiales (Nivel 3) | 2026-04-15 A | 2026-04-16 A | 0% → 100% | 24.75d → none |
| 164 | Implementar plataformas especiales (Nivel final) | 2026-04-17 A | 2026-04-17 A | 0% → 100% | 23d → none |
| 166 | Implementar zonas de muerte instantánea (Nivel 2) | 2026-04-13 A | 2026-04-13 A | 0% → 100% | 0d → none |
| 167 | Implementar zonas de muerte instantánea (Nivel 3) | 2026-04-15 A | 2026-04-15 A | 0% → 100% | 25d → none |
| 168 | Implementar zonas de muerte instantánea (Nivel final) | 2026-04-17 A | 2026-04-17 A | 0% → 100% | 23.5d → none |
| 169 | **Arte y animación del entorno** | 2026-05-01 A | 2026-05-04 A | 0% → 100% | 0d → none |
| 170 | Diseñar fondo y efectos del nivel tutorial | 2026-05-01 A | 2026-05-04 A | 0% → 100% | 12d → none |
| 171 | Diseñar fondo y efectos del nivel 1 | 2026-05-01 A | 2026-05-04 A | 0% → 100% | 0d → none |
| 172 | Diseñar fondo y efectos del nivel 2 | 2026-05-01 A | 2026-05-04 A | 0% → 100% | 0d → none |
| 173 | Diseñar fondo y efectos del nivel 3 | 2026-05-01 A | 2026-05-04 A | 0% → 100% | 0d → none |
| 174 | Diseñar fondo y efectos del nivel final | 2026-05-01 A | 2026-05-04 A | 0% → 100% | 0d → none |
| 175 | **Sistemas globales** | 2026-04-13 A | 2026-05-19 A | 0% → 100% | 0d → none |
| 176 | **Sistema de interfaz y menús** | 2026-04-13 A | 2026-05-08 A | 0% → 100% | 0d → none |
| 177 | **HUD** | 2026-04-13 A | 2026-04-14 A | 0% → 100% | 0d → none |
| 178 | Implementar indicadores de salud | 2026-04-13 A | 2026-04-14 A | 0% → 100% | 26.25d → none |
| 179 | Implementar indicador de poderes | 2026-04-13 A | 2026-04-14 A | 0% → 100% | 26.25d → none |
| 180 | Implementar recolección de objetos clave | 2026-04-13 A | 2026-04-14 A | 0% → 100% | 0d → none |
| 181 | **Pantalla de inicio** | 2026-05-05 A | 2026-05-06 A | 0% → 100% | 0d → none |
| 182 | Diseñar interfaz de inicio | 2026-05-05 A | 2026-05-05 A | 0% → 100% | 0.5d → none |
| 183 | Programar navegación de la pantalla de inicio | 2026-05-05 A | 2026-05-06 A | 0% → 100% | 0d → none |
| 184 | **Pantalla de pausa** | 2026-05-06 A | 2026-05-07 A | 0% → 100% | 0d → none |
| 185 | Diseñar interfaz de pausa | 2026-05-06 A | 2026-05-07 A | 0% → 100% | 8.75d → none |
| 186 | Programar lógica de pausa | 2026-05-06 A | 2026-05-07 A | 0% → 100% | 8.75d → none |
| 187 | Programar navegación de menú | 2026-05-06 A | 2026-05-07 A | 0% → 100% | 0d → none |
| 188 | **Pantalla de ajustes** | 2026-05-06 A | 2026-05-08 A | 0% → 100% | 8d → none |
| 189 | Diseñar interfaz de ajustes | 2026-05-07 A | 2026-05-08 A | 0% → 100% | 8.75d → none |
| 190 | Programar lógica de las configuraciones | 2026-05-06 A | 2026-05-08 A | 0% → 100% | 8d → none |
| 191 | **Pantalla de carga** | 2026-05-07 A | 2026-05-08 A | 0% → 100% | 8d → none |
| 192 | Diseñar pantalla de carga | 2026-05-07 A | 2026-05-08 A | 0% → 100% | 8d → none |
| 193 | Implementar consejos de juego | 2026-05-07 A | 2026-05-08 A | 0% → 100% | 8.25d → none |
| 194 | **Pantalla de créditos** | 2026-05-07 A | 2026-05-08 A | 0% → 100% | 0d → none |
| 195 | Diseñar pantalla de créditos | 2026-05-07 A | 2026-05-08 A | 0% → 100% | 8.75d → none |
| 196 | Programar lógica de la pantalla de créditos | 2026-05-07 A | 2026-05-08 A | 0% → 100% | 0d → none |
| 197 | **Sistema de guardado y progresión** | 2026-05-13 A | 2026-05-19 A | 0% → 100% | 0d → none |
| 198 | **Sistema de guardado automático** | 2026-05-13 A | 2026-05-15 A | 0% → 100% | 0d → none |
| 199 | Implementar lógica de guardado | 2026-05-13 A | 2026-05-15 A | 0% → 100% | 3.25d → none |
| 200 | Implementar indicador visual | 2026-05-13 A | 2026-05-14 A | 0% → 100% | 0d → none |
| 201 | Implementar mecanismo anti-corrupcion | 2026-05-13 A | 2026-05-14 A | 0% → 100% | 4.25d → none |
| 202 | **Sistema de checkpoints** | 2026-05-13 A | 2026-05-18 A | 0% → 100% | 2.25d → none |
| 203 | Implementar lógica de checkpoints | 2026-05-13 A | 2026-05-18 A | 0% → 100% | 2.25d → none |
| 204 | **Persistencia de habilidades** | 2026-05-13 A | 2026-05-15 A | 0% → 100% | 3.25d → none |
| 205 | Implementar guardado y carga de habilidades | 2026-05-13 A | 2026-05-15 A | 0% → 100% | 3.25d → none |
| 206 | **Persistencia de progreso** | 2026-05-14 A | 2026-05-19 A | 0% → 100% | 1.75d → none |
| 207 | Implementar sistema de escritura y lectura de datos | 2026-05-14 A | 2026-05-19 A | 0% → 100% | 1.75d → none |
| 208 | **Sistema de leaderboard y analíticas** | 2026-05-14 A | 2026-05-19 A | 0% → 100% | 1.75d → none |
| 209 | **Registro de métricas** | 2026-05-14 A | 2026-05-19 A | 0% → 100% | 1.75d → none |
| 210 | Implementar captura de métricas | 2026-05-14 A | 2026-05-19 A | 0% → 100% | 1.75d → none |
| 211 | **Identificación de jugadores** | 2026-05-14 A | 2026-05-15 A | 0% → 100% | 3.75d → none |
| 212 | Implementar introducción de nickname | 2026-05-14 A | 2026-05-14 A | 0% → 100% | 4d → none |
| 213 | Implementar generación de UUID | 2026-05-14 A | 2026-05-15 A | 0% → 100% | 3.75d → none |

| ID | Task | Start | Finish | Complete | Total float |
| --- | --- | --- | --- | --- | --- |
| 214 | **Envío y alamcenamiento de datos** | 2026-05-14 A | 2026-05-18 A | 0% → 100% | 2.75d → none |
| 215 | Configurar comunicación cliente-servidor | 2026-05-14 A | 2026-05-18 A | 0% → 100% | 2.75d → none |
| 216 | Implementar envío de métricas | 2026-05-14 A | 2026-05-15 A | 0% → 100% | 3d → none |
| 217 | **Visualización de leaderboard** | 2026-05-14 A | 2026-05-18 A | 0% → 100% | 2.75d → none |
| 218 | Diseñar interfaz de clasificación | 2026-05-14 A | 2026-05-15 A | 0% → 100% | 3.75d → none |
| 219 | Implementar listas ordenadas según métricas | 2026-05-14 A | 2026-05-18 A | 0% → 100% | 2.75d → none |
| 220 | **Sistema de audio** | 2026-05-14 A | 2026-05-15 A | 0% → 100% | 0d → none |
| 221 | **Música de niveles** | 2026-05-14 A | 2026-05-15 A | 0% → 100% | 3.75d → none |
| 222 | Integrar tema musical del tutorial | 2026-05-14 A | 2026-05-15 A | 0% → 100% | 3.75d → none |
| 223 | Integrar tema musical del nivel 1 | 2026-05-14 A | 2026-05-15 A | 0% → 100% | 3.75d → none |
| 224 | Integrar tema musical del nivel 2 | 2026-05-14 A | 2026-05-15 A | 0% → 100% | 3.75d → none |
| 225 | Integrar tema musical del nivel 3 | 2026-05-14 A | 2026-05-15 A | 0% → 100% | 3.75d → none |
| 226 | Integrar tema musical del nivel final | 2026-05-14 A | 2026-05-15 A | 0% → 100% | 3.75d → none |
| 227 | **Música de jefes** | 2026-05-14 A | 2026-05-15 A | 0% → 100% | 3.5d → none |
| 228 | Integrar tema musical de Umbra | 2026-05-14 A | 2026-05-15 A | 0% → 100% | 3.5d → none |
| 229 | Integrar tema musical del Guardián de Hielo | 2026-05-14 A | 2026-05-15 A | 0% → 100% | 3.5d → none |
| 230 | Integrar tema musical del Coloso de Ceniza | 2026-05-14 A | 2026-05-15 A | 0% → 100% | 3.5d → none |
| 231 | Integrar tema musical de la Tempestad Dorada | 2026-05-14 A | 2026-05-15 A | 0% → 100% | 3.5d → none |
| 232 | Integrar tema musical del Vacío | 2026-05-14 A | 2026-05-15 A | 0% → 100% | 3.5d → none |
| 233 | **Música de pantallas secundarias** | 2026-05-14 A | 2026-05-15 A | 0% → 100% | 3.75d → none |
| 234 | Implementar tema musical de inicio | 2026-05-14 A | 2026-05-15 A | 0% → 100% | 3.75d → none |
| 235 | Implementar tema musical de pausa | 2026-05-14 A | 2026-05-15 A | 0% → 100% | 3.75d → none |
| 236 | Implementar tema musical de créditos | 2026-05-14 A | 2026-05-15 A | 0% → 100% | 3.75d → none |
| 237 | **Efectos de sonido** | 2026-05-14 A | 2026-05-15 A | 0% → 100% | 3.75d → none |
| 238 | Implementar efectos de sonido de movimiento | 2026-05-14 A | 2026-05-15 A | 0% → 100% | 3.75d → none |
| 239 | Implementar efectos de sonido de combate | 2026-05-14 A | 2026-05-15 A | 0% → 100% | 3.75d → none |
| 240 | Implementar efectos de sonido de entorno | 2026-05-14 A | 2026-05-15 A | 0% → 100% | 3.75d → none |
| 241 | Implementar efectos de sonido de menús | 2026-05-14 A | 2026-05-15 A | 0% → 100% | 3.75d → none |
| 242 | **Sistema de control de volumen** | 2026-05-14 A | 2026-05-15 A | 0% → 100% | 0d → none |
| 243 | Programar buses de audio | 2026-05-14 A | 2026-05-15 A | 0% → 100% | 3.5d → none |
| 244 | Vincular controles de audio | 2026-05-14 A | 2026-05-15 A | 0% → 100% | 0d → none |
| 245 | Implementar persistencia de volumen | 2026-05-14 A | 2026-05-14 A | 0% → 100% | 4d → none |
| 246 | **Calidad** | 2026-02-02 A | 2026-05-14 A | 0% → 100% | 4d → none |
| 247 | **Pruebas y validación** | 2026-02-02 A | 2026-05-14 A | 0% → 100% | 4d → none |
| 248 | **Plan de pruebas** | 2026-05-11 A | 2026-05-12 A | 0% → 100% | 6.5d → none |
| 249 | Definir estrategia de QA | 2026-05-11 A | 2026-05-12 A | 0% → 100% | 6.5d → none |
| 250 | Establecer casos de uso a probar | 2026-05-11 A | 2026-05-12 A | 0% → 100% | 6.75d → none |
| 251 | **Pruebas funcionales** | 2026-05-11 A | 2026-05-13 A | 0% → 100% | 0d → none |
| 252 | Probar navegación de menús | 2026-05-11 A | 2026-05-12 A | 0% → 100% | 0.25d → none |
| 253 | Probar persistencia de guardado | 2026-05-11 A | 2026-05-12 A | 0% → 100% | 0d → none |
| 254 | Probar carga de escenas | 2026-05-11 A | 2026-05-12 A | 0% → 100% | 0d → none |
| 255 | Probar mecánicas principales | 2026-05-11 A | 2026-05-13 A | 0% → 100% | 5.5d → none |
| 256 | **Pruebas de jugabilidad** | 2026-02-02 A | 2026-05-12 A | 0% → 100% | 6d → none |
| 257 | Realizar sesiones de playtesting | 2026-02-02 A | 2026-02-05 A | 0% → 100% | 74.25d → none |
| 258 | Ajustar curva de dificultad | 2026-05-11 A | 2026-05-12 A | 0% → 100% | 6d → none |
| 259 | Ajustar respuesta de controles | 2026-05-11 A | 2026-05-12 A | 0% → 100% | 0.25d → none |
| 260 | **Optimización** | 2026-05-12 A | 2026-05-14 A | 0% → 100% | 0d → none |
| 261 | Analizar el rendimiento del juego | 2026-05-12 A | 2026-05-14 A | 0% → 100% | 4d → none |
| 262 | Optimizar scripts | 2026-05-12 A | 2026-05-13 A | 0% → 100% | 0d → none |
| 263 | Optimizar recursos gráficos | 2026-05-12 A | 2026-05-13 A | 0% → 100% | 5.25d → none |
| 264 | **Entrega y cierre** | 2026-02-02 A | 2026-05-20 A | 0% → 100% | 0d → none |
| 265 | **Entrega de producto** | 2026-05-15 A | 2026-05-15 A | 0% → 100% | 0d → none |
| 266 | **Build jugable** | 2026-05-15 A | 2026-05-15 A | 0% → 100% | 0d → none |
| 267 | Compilar versión jugable para Windows | 2026-05-15 A | 2026-05-15 A | 0% → 100% | 0d → none |
| 268 | Verificar recursos incluidos | 2026-05-15 A | 2026-05-15 A | 0% → 100% | 0d → none |
| 269 | Crear instalador | 2026-05-15 A | 2026-05-15 A | 0% → 100% | 0.62d → none |
| 270 | **Documentación de cierre** | 2026-02-02 A | 2026-05-20 A | 0% → 100% | 0d → none |
| 271 | **Memoria** | 2026-02-02 A | 2026-05-20 A | 0% → 100% | 0d → none |
| 272 | Redacción de informe de cierre | 2026-05-20 A | 2026-05-20 A | 0% → 100% | 0d → none |
| 273 | Redacción de la memoria | 2026-02-02 A | 2026-02-25 A | 0% → 100% | 60.5d → none |
| 274 | **Manuales** | 2026-05-18 A | 2026-05-19 A | 0% → 100% | 0d → none |
| 275 | Realizar manual de usuario para desarrolladores y usuarios finales | 2026-05-18 A | 2026-05-19 A | 0% → 100% | 0d → none |
